# Hörsaal Sanierung

How a schedule from Primavera P6 changed from version to version. A marks actual dates.

## Version 1 (data date 2026-11-09, saved 2026-11-21)

Note of the change: Merge branch 'feat/seedfiles' into feat/core

| ID | WBS | Task | Duration | Start | Finish | Predecessors |
| --- | --- | --- | --- | --- | --- | --- |
|  | 1 | **Vorbereitung** |  | 2026-11-09 | 2026-11-11 |  |
|  | 1 | **Baustelle** |  | 2026-11-09 | 2026-11-09 |  |
| A1010 |  | Baustelleneinrichtung | 1d | 2026-11-09 | 2026-11-09 |  |
|  | 2 | **Rückbau** |  | 2026-11-10 | 2026-11-11 |  |
| A1020 |  | Rückbau Bestuhlung | 2d | 2026-11-10 | 2026-11-11 | A1010 |
|  | 2 | **Ausbau** |  | 2026-11-12 | 2026-11-26 |  |
|  | 1 | **Boden** |  | 2026-11-12 | 2026-11-17 |  |
| A1030 |  | Bodenbelag | 4d | 2026-11-12 | 2026-11-17 | A1020 |
|  | 2 | **Akustik** |  | 2026-11-12 | 2026-11-18 |  |
| A1040 |  | Akustikpaneele und Decke | 5d | 2026-11-12 | 2026-11-18 | A1020 |
|  | 3 | **Bühne** |  | 2026-11-16 | 2026-11-20 |  |
| A1065 |  | Bühne | 5d | 2026-11-16 | 2026-11-20 | A1020 |
|  | 4 | **Maler** |  | 2026-11-19 | 2026-11-23 |  |
| A1070 |  | Malerarbeiten | 3d | 2026-11-19 | 2026-11-23 | A1040 |
|  | 5 | **Bestuhlung** |  | 2026-11-23 | 2026-11-26 |  |
| A1080 |  | Bestuhlung neu | 4d | 2026-11-23 | 2026-11-26 | A1030, A1070 |
|  | 3 | **Technik (TGA/AV)** |  | 2026-11-16 | 2026-11-24 |  |
|  | 1 | **Elektro** |  | 2026-11-16 | 2026-11-20 |  |
| A1050 |  | Elektro und Licht-Traverse | 5d | 2026-11-16 | 2026-11-20 | A1020 |
|  | 2 | **AV** |  | 2026-11-19 | 2026-11-24 |  |
| A1060 |  | AV-Technik | 4d | 2026-11-19 | 2026-11-24 | A1050 |
|  | 4 | **Abschluss** |  | 2026-11-26 | 2026-11-26 |  |
|  | 1 | **Abnahme** |  | 2026-11-26 | 2026-11-26 |  |
| A1090 |  | Abnahme | 1d | 2026-11-26 | 2026-11-26 | A1060, A1065, A1080 |

## Version 2 (data date 2026-11-09, saved 2026-11-22)

Note of the change: pitch: 2-minute submission video, 7-slide deck, real screen recordings

Last finish 2026-11-26 → 2026-12-01 (+5d).

Changed:

| ID | Task | Start | Finish | Duration |
| --- | --- | --- | --- | --- |
| 2 | **Ausbau** |  | 2026-11-26 → 2026-11-30 (+4d) |  |
| 4 | **Maler** |  | 2026-11-23 → 2026-11-20 (-3d) |  |
| A1070 | Malerarbeiten |  | 2026-11-23 → 2026-11-20 (-3d) | 3d → 2d |
| 5 | **Bestuhlung** |  | 2026-11-26 → 2026-11-30 (+4d) |  |
| A1080 | Bestuhlung neu |  | 2026-11-26 → 2026-11-30 (+4d) | 4d → 6d |
| 3 | **Technik (TGA/AV)** |  | 2026-11-24 → 2026-11-27 (+3d) |  |
| 1 | **Elektro** |  | 2026-11-20 → 2026-11-19 (-1d) |  |
| A1050 | Elektro und Licht-Traverse |  | 2026-11-20 → 2026-11-19 (-1d) | 5d → 4d |
| 2 | **AV** | 2026-11-19 → 2026-11-20 (+1d) | 2026-11-24 → 2026-11-27 (+3d) |  |
| A1060 | AV-Technik | 2026-11-19 → 2026-11-20 (+1d) | 2026-11-24 → 2026-11-27 (+3d) | 4d → 6d |
| 4 | **Abschluss** | 2026-11-26 → 2026-12-01 (+5d) | 2026-11-26 → 2026-12-01 (+5d) |  |
| 1 | **Abnahme** | 2026-11-26 → 2026-12-01 (+5d) | 2026-11-26 → 2026-12-01 (+5d) |  |
| A1090 | Abnahme | 2026-11-26 → 2026-12-01 (+5d) | 2026-11-26 → 2026-12-01 (+5d) |  |
